# pz1_ITmanagement

Schedule from MS Project, 2025-09-24 to 2026-11-13, costs in Br, A marks actual dates.
IT-management
me0xffff

## Calendars

- Standard: Mon-Fri 08:00-12:00, 13:00-17:00; Sat-Sun off.

## Resources

| Resource | Unit | Rate | Cost per use |
| --- | --- | --- | --- |
| Архитектор |  |  | 550000 |
| МУП «Горгаз» |  |  | 700000 |
| МУП «Водоканал» |  |  | 500000 |
| АО «Водолей» |  |  | 500000 |
| Рабочий1 |  | 1250 |  |
| Рабочий2 |  | 1250 |  |
| Рабочий3 |  | 1250 |  |
| Подсобник1 |  | 500 |  |
| Подсобник2 |  | 500 |  |
| Трактор |  |  | 70000 |
| Плотник1 |  | 18750 | 75000 |
| Плотник2 |  | 1875 | 75000 |
| АО «Неопласт» |  |  | 1200000 |
| Водопроводчик1 |  | 1000 |  |
| Водопроводчик2 |  | 1000 |  |
| Электрик |  | 1250 |  |
| АО «Газовик» |  |  | 250000 |
| ООО «Потолки» |  |  | 1500000 |
| Песок | t | 5600 |  |
| Щебень | t | 6000 |  |
| Цемент | t | 780000 | 250000 |
| Кирпич | psc | 70 |  |
| Брус |  |  | 250000 |
| Доска обрезная | m3 | 70000 |  |
| Доска необрезная | m3 | 50000 |  |
| Шифер |  |  | 400000 |
| Электропровод |  |  | 150000 |
| Электросчетчик |  |  | 50000 |
| Труба водопроводная |  |  | 350000 |
| Труба канализационная |  |  | 30000 |
| Штукатурка |  |  | 1500000 |
| Потолок | m2 | 1500 |  |
| Окно |  | 100000 |  |
| Дверь наружная |  |  | 200000 |
| Труба отопительная |  |  | 200000 |
| Котел |  |  | 400000 |
| Печь газовая |  |  | 200000 |
| Ванна |  | 450000 |  |
| Унитаз компакт |  | 200000 |  |
| Раковина |  | 160000 |  |
| Кран |  | 70000 |  |
| Паркет | m2 | 5500 |  |
| Труба газовая |  |  | 500000 |
| Дверь внутренняя |  | 90000 |  |
| Доставка |  |  |  |

## Schedule

| ID | WBS | Task | Type | Duration | Start | Finish | Predecessors | Complete | Remaining | Baseline start | Baseline finish | Baseline duration | Total slack | Resources | Work | Actual work | Cost | Baseline cost | Actual cost |
| --- | --- | --- | --- | --- | --- | --- | --- | --- | --- | --- | --- | --- | --- | --- | --- | --- | --- | --- | --- |
| 1 | 1 | Начало проекта | milestone | 0d | 2025-09-24 | 2025-09-24 |  |  |  | 2025-09-24 | 2025-09-24 | 0d | 297.03d |  |  |  |  |  |  |
| 2 | 2 | **Утверждение проектов** |  | 101d | 2025-09-24 A | 2026-02-11 |  | 40% | 60.42d | 2025-09-24 | 2026-02-11 | 101d | 0d |  | 1800h | 572.4h | 2,250,000 | 2,250,000 | 2,250,000 |
| 3 | 2.1 | Начало утверждения проектов |  | 1d | 2025-09-24 A | 2025-09-24 A | 1 | 100% |  | 2025-09-24 | 2025-09-24 | 1d |  |  |  |  |  |  |  |
| 4 | 2.2 | Утверждение проекта на строительство |  | 90d | 2025-09-25 A | 2026-01-28 | 3 | 40% | 54d | 2025-09-25 | 2026-01-28 | 90d | 10d | Архитектор | 720h | 288h | 550,000 | 550,000 | 550,000 |
| 5 | 2.3 | Утверждение проекта на газ |  | 100d | 2025-09-25 A | 2026-02-11 | 3 | 25% | 75d | 2025-09-25 | 2026-02-11 | 100d | 0d | МУП «Горгаз» | 480h | 30h | 700,000 | 700,000 | 700,000 |
| 6 | 2.4 | Утверждение проекта на водопровод и канализацию |  | 60d | 2025-09-25 A | 2025-12-17 | 3 | 80% | 12d | 2025-09-25 | 2025-12-17 | 60d | 40d | МУП «Водоканал» | 240h | 204h | 500,000 | 500,000 | 500,000 |
| 7 | 2.5 | Утверждение проекта на отопление |  | 90d | 2025-09-25 A | 2026-01-28 | 3 | 30% | 63d | 2025-09-25 | 2026-01-28 | 90d | 10d | АО «Водолей» | 360h | 50.4h | 500,000 | 500,000 | 500,000 |
| 8 | 2.6 | Проекты утверждены | milestone | 0d | 2026-02-11 | 2026-02-11 | 4, 5, 6, 7 |  |  | 2026-02-11 | 2026-02-11 | 0d | 0d |  |  |  |  |  |  |
| 9 | 3 | **Строительство фундамента** |  | 38.67d | 2026-02-12 | 2026-04-07 |  |  |  | 2026-02-12 | 2026-04-07 | 38.67d | 0d |  | 280h |  | 1,951,089,333.33 | 1,951,089,333.33 |  |
| 10 | 3.1 | Начало закладки фундамента |  | 2d | 2026-02-12 | 2026-02-13 | 8 |  |  | 2026-02-12 | 2026-02-13 | 2d | 0d |  |  |  |  |  |  |
| 11 | 3.2 | Рытье траншей |  | 1.67d | 2026-02-16 | 2026-02-17 | 10 |  |  | 2026-02-16 | 2026-02-17 | 1.67d | 0d | Рабочий1; Рабочий2; Рабочий3; Подсобник1; Подсобник2; Трактор | 80h |  | 133,333.33 | 133,333.33 |  |
| 12 | 3.3 | Заливка фундамента |  | 5d | 2026-02-17 | 2026-02-24 | 11 |  |  | 2026-02-17 | 2026-02-24 | 5d | 0d | Рабочий1; Рабочий2; Рабочий3; Подсобник1; Подсобник2; Песок [10 t]; Щебень [10 t]; Цемент [2500 t]; Доставка [62.5%]; Доска необрезная [3 m3] | 200h |  | 1,950,956,000 | 1,950,956,000 |  |
| 13 | 3.4 | Фундамент завершен | milestone | 0d | 2026-04-07 | 2026-04-07 | 12FS+30d |  |  | 2026-04-07 | 2026-04-07 | 0d | 0d |  |  |  |  |  |  |
| 14 | 4 | **Каркас и крыша** |  | 111.36d | 2026-04-07 | 2026-09-10 |  |  |  | 2026-04-07 | 2026-09-10 | 111.36d | 0d |  | 3630.96h |  | 20,112,280 | 20,112,280 |  |
| 15 | 4.1 | Начало каркаса |  | 1d | 2026-04-07 | 2026-04-08 | 13 |  |  | 2026-04-07 | 2026-04-08 | 1d | 0d |  |  |  |  |  |  |
| 16 | 4.2 | Кладка стен |  | 60.36d | 2026-04-08 | 2026-07-02 | 15 |  |  | 2026-04-08 | 2026-07-02 | 60.36d | 0d | Рабочий1; Рабочий2; Рабочий3; Подсобник1; Подсобник2; Песок [6 t]; Цемент [2 t]; Доставка [5.2%]; Кирпич [70000 psc] | 2414.4h |  | 9,287,280 | 9,287,280 |  |
| 17 | 4.3 | Перекрытие стен |  | 15d | 2026-07-02 | 2026-07-23 | 16 |  |  | 2026-07-02 | 2026-07-23 | 15d | 0d | Рабочий1; Рабочий2; Рабочий3; Подсобник1; Подсобник2; Доставка [12.5%]; Брус [1500%]; Доска обрезная [7 m3] | 600h |  | 1,460,000 | 1,460,000 |  |
| 18 | 4.4 | Установка крыши |  | 30d | 2026-07-23 | 2026-09-03 | 17 |  |  | 2026-07-23 | 2026-09-03 | 30d | 5d | Плотник1; Плотник2; Доска необрезная [10 m3]; Шифер [2000%]; Доставка [5%] | 480h |  | 6,120,000 | 6,120,000 |  |
| 19 | 4.5 | Установка наружных дверей и окон |  | 7.07d | 2026-07-23 | 2026-08-03 | 17 |  |  | 2026-07-23 | 2026-08-03 | 7.07d | 27.93d | АО «Неопласт»; Окно; Дверь наружная | 56.56h |  | 1,500,000 | 1,500,000 |  |
| 20 | 4.6 | Установка полов |  | 5d | 2026-09-03 | 2026-09-10 | 17 |  |  | 2026-09-03 | 2026-09-10 | 5d | 0d | Плотник1; Плотник2; Доска обрезная [10 m3]; Доставка [17.5%] | 80h |  | 1,745,000 | 1,745,000 |  |
| 21 | 4.7 | Каркас готов | milestone | 0d | 2026-09-10 | 2026-09-10 | 18, 19, 20 |  |  | 2026-09-10 | 2026-09-10 | 0d | 0d |  |  |  |  |  |  |
| 22 | 5 | **Коммуникации** |  | 11d | 2026-09-10 | 2026-09-25 |  |  |  | 2026-09-10 | 2026-09-25 | 11d | 0d |  | 240h |  | 1,540,000 | 1,540,000 |  |
| 23 | 5.1 | Начало установки коммуникаций |  | 1d | 2026-09-10 | 2026-09-11 | 21 |  |  | 2026-09-10 | 2026-09-11 | 1d | 0d |  |  |  |  |  |  |
| 24 | 5.2 | Проведение и подключение водопровода и канализации |  | 10d | 2026-09-11 | 2026-09-25 | 23 |  |  | 2026-09-11 | 2026-09-25 | 10d | 0d | Водопроводчик1; Водопроводчик2; Труба водопроводная; Труба канализационная | 160h |  | 540,000 | 540,000 |  |
| 25 | 5.3 | Установка и подключение электропроводки |  | 5d | 2026-09-11 | 2026-09-18 | 23 |  |  | 2026-09-11 | 2026-09-18 | 5d | 5d | Электрик; Электросчетчик; Электропровод [10000%] | 40h |  | 250,000 | 250,000 |  |
| 26 | 5.4 | Установка и подключение газовых коммуникаций |  | 5d | 2026-09-11 | 2026-09-18 | 23 |  |  | 2026-09-11 | 2026-09-18 | 5d | 5d | АО «Газовик»; Труба газовая | 40h |  | 750,000 | 750,000 |  |
| 27 | 5.5 | Коммуникации готовы | milestone | 0d | 2026-09-25 | 2026-09-25 | 24, 25, 26 |  |  | 2026-09-25 | 2026-09-25 | 0d | 0d |  |  |  |  |  |  |

| ID | WBS | Task | Type | Duration | Start | Finish | Predecessors | Baseline start | Baseline finish | Baseline duration | Total slack | Constraint | Resources | Work | Cost | Baseline cost |
| --- | --- | --- | --- | --- | --- | --- | --- | --- | --- | --- | --- | --- | --- | --- | --- | --- |
| 28 | 6 | **Внутренняя отделка** |  | 35d | 2026-09-25 | 2026-11-13 |  | 2026-09-25 | 2026-11-13 | 35d | 0d |  |  | 1080h | 10,384,000 | 10,384,000 |
| 29 | 6.1 | Начало отделки | milestone | 0d | 2026-09-25 | 2026-09-25 | 27 | 2026-09-25 | 2026-09-25 | 0d | 0d |  |  |  |  |  |
| 30 | 6.2 | Внутренние двери |  | 10d | 2026-09-25 | 2026-10-09 | 29 | 2026-09-25 | 2026-10-09 | 10d | 0d |  | Плотник1; Плотник2; Дверь внутренняя [1000%]; Доставка [12.5%] | 160h | 2,800,000 | 2,800,000 |
| 31 | 6.3 | Навесные потолки |  | 5d | 2026-10-09 | 2026-10-16 | 30 | 2026-10-09 | 2026-10-16 | 5d | 0d |  | ООО «Потолки»; Потолок [190 m2] | 40h | 1,785,000 | 1,785,000 |
| 32 | 6.4 | Отделка стен |  | 3d | 2026-10-20 | 2026-10-23 | 30 | 2026-10-20 | 2026-10-23 | 3d | 0d | as late as possible | Рабочий1; Рабочий2; Рабочий3; Подсобник1; Подсобник2; Штукатурка [10000%] | 120h | 1,614,000 | 1,614,000 |
| 33 | 6.5 | Монтаж отопления |  | 5d | 2026-10-09 | 2026-10-16 | 30 | 2026-10-09 | 2026-10-16 | 5d | 0d |  | Водопроводчик1; Водопроводчик2; Труба отопительная | 80h | 280,000 | 280,000 |
| 34 | 6.6 | Установка оборудования, приборов, сантехники |  | 5d | 2026-10-16 | 2026-10-23 | 31, 33 | 2026-10-16 | 2026-10-23 | 5d | 0d |  | Водопроводчик1; Водопроводчик2; Котел; Печь газовая; Ванна; Унитаз компакт [200%]; Раковина [300%]; Кран [400%] | 80h | 2,290,000 | 2,290,000 |
| 35 | 6.7 | Настил полов |  | 15d | 2026-10-23 | 2026-11-13 | 32, 34 | 2026-10-23 | 2026-11-13 | 15d | 0d |  | Рабочий1; Рабочий2; Рабочий3; Подсобник1; Подсобник2; Паркет [190 m2] | 600h | 1,615,000 | 1,615,000 |
| 36 | 6.8 | Конец отделки | milestone | 0d | 2026-11-13 | 2026-11-13 | 35 | 2026-11-13 | 2026-11-13 | 0d | 0d |  |  |  |  |  |
| 37 | 6.9 | Конец проекта | milestone | 0d | 2026-11-13 | 2026-11-13 | 36 | 2026-11-13 | 2026-11-13 | 0d | 0d |  |  |  |  |  |
